# BCHARREH-TEST

How a schedule from MS Project XML changed from version to version. A marks actual dates.

## Version 1 (data date 2026-03-02, saved 2026-03-02, file programme-baseline.xml)

Note of the change: Merge pull request #1 from nadimsaleh123/claude/construction-automation-usecases-pucblv

| ID | Task | Duration | Start | Finish | Predecessors | Total float |
| --- | --- | --- | --- | --- | --- | --- |
| 1 | Site establishment & scaffolding — House A | 10d | 2026-03-02 | 2026-03-13 |  | 0d |
| 2 | Scaffolding — House B | 10d | 2026-03-16 | 2026-03-27 |  | 8d |
| 3 | Roof strip & timber survey — House A | 15d | 2026-03-16 | 2026-04-03 | 1 | 0d |
| 4 | Roof re-tile — House A | 20d | 2026-04-06 | 2026-05-01 | 3 | 0d |
| 5 | Roof strip — House B | 15d | 2026-04-06 | 2026-04-24 | 2 | 5d |
| 6 | Roof re-tile — House B | 20d | 2026-04-27 | 2026-05-22 | 5 | 5d |
| 7 | Stone repairs & repointing — House A | 50d | 2026-04-06 | 2026-06-12 | 4SS | 12d |
| 8 | Stone repairs & repointing — House B | 40d | 2026-05-25 | 2026-07-17 | 6SS | 6d |
| 9 | Structural steel ties & new lintels — House A | 20d | 2026-05-04 | 2026-05-29 | 7SS+10d | 3d |
| 10 | Joinery restoration in workshop (windows & doors) | 60d | 2026-04-13 | 2026-07-03 |  | 2d |
| 11 | Joinery installation — House A | 20d | 2026-07-06 | 2026-07-31 | 10 | 2d |
| 12 | Joinery installation — House B | 20d | 2026-08-03 | 2026-08-28 | 11 | 4d |
| 13 | MEP first fix — House A | 30d | 2026-06-01 | 2026-07-10 | 4 | 9d |
| 14 | MEP first fix — House B | 30d | 2026-07-20 | 2026-08-28 | 6 | 4d |
| 15 | Lime plaster & render — House A | 30d | 2026-07-13 | 2026-08-21 | 13, 11 | 0d |
| 16 | Lime plaster & render — House B | 30d | 2026-08-31 | 2026-10-09 | 14 | 0d |
| 17 | Internal finishes — House A | 30d | 2026-08-24 | 2026-10-02 | 15 | 3d |
| 18 | Internal finishes — House B | 25d | 2026-10-12 | 2026-11-13 | 16 | 0d |
| 19 | External works, terraces & drainage | 40d | 2026-09-07 | 2026-10-30 |  | 10d |
| 20 | Practical completion | 0d | 2026-11-27 | 2026-11-27 | 18, 17, 19 | 0d |

## Version 2 (data date 2026-06-30, saved 2026-06-30, file programme-previous.xml)

Note of the change: Merge pull request #1 from nadimsaleh123/claude/construction-automation-usecases-pucblv

Last finish stays 2026-11-27. Complete tasks 0 → 8.

Changed:

| ID | Task | Start | Finish | Complete | Total float |
| --- | --- | --- | --- | --- | --- |
| 1 | Site establishment & scaffolding — House A | 2026-03-02 A | 2026-03-13 A | 0% → 100% | 0d → none |
| 2 | Scaffolding — House B | 2026-03-16 A |  | 0% → 100% | 8d → none |
| 3 | Roof strip & timber survey — House A | 2026-03-16 A |  | 0% → 100% | 0d → none |
| 4 | Roof re-tile — House A |  |  | 0% → 100% | 0d → none |
| 5 | Roof strip — House B |  |  | 0% → 100% | 5d → none |
| 6 | Roof re-tile — House B |  |  | 0% → 100% | 5d → none |
| 7 | Stone repairs & repointing — House A |  |  | 0% → 100% | 12d → none |
| 8 | Stone repairs & repointing — House B |  |  | 0% → 40% | 6d → 0d |
| 9 | Structural steel ties & new lintels — House A |  |  | 0% → 100% | 3d → none |
| 10 | Joinery restoration in workshop (windows & doors) | 2026-04-13 A |  | 0% → 68% |  |
| 13 | MEP first fix — House A | 2026-06-01 → 2026-06-08 A (+7d) |  | 0% → 50% | 9d → 7d |
| 14 | MEP first fix — House B | 2026-07-20 → 2026-07-27 (+7d) | 2026-08-28 → 2026-09-04 (+7d) |  | 4d → 0d |
| 16 | Lime plaster & render — House B | 2026-08-31 → 2026-09-07 (+7d) | 2026-10-09 → 2026-10-16 (+7d) |  |  |
| 18 | Internal finishes — House B | 2026-10-12 → 2026-10-19 (+7d) | 2026-11-13 → 2026-11-20 (+7d) |  |  |

## Version 3 (data date 2026-07-28, saved 2026-07-28, file programme-current.xml)

Note of the change: Merge pull request #1 from nadimsaleh123/claude/construction-automation-usecases-pucblv

Last finish 2026-11-27 → 2026-12-02 (+5d).

Changed:

| ID | Task | Start | Finish | Complete | Total float |
| --- | --- | --- | --- | --- | --- |
| 8 | Stone repairs & repointing — House B |  |  | 40% → 65% | 0d → -3d |
| 10 | Joinery restoration in workshop (windows & doors) |  |  | 68% → 80% | 2d → 1d |
| 12 | Joinery installation — House B | 2026-08-03 → 2026-08-10 (+7d) | 2026-08-28 → 2026-09-04 (+7d) |  | 4d → 3d |
| 13 | MEP first fix — House A |  |  | 50% → 70% | 7d → 6d |
| 14 | MEP first fix — House B | 2026-07-27 → 2026-08-03 (+7d) | 2026-09-04 → 2026-09-11 (+7d) |  | 0d → -3d |
| 16 | Lime plaster & render — House B | 2026-09-07 → 2026-09-14 (+7d) | 2026-10-16 → 2026-10-23 (+7d) |  | 0d → -3d |
| 18 | Internal finishes — House B | 2026-10-19 → 2026-10-26 (+7d) | 2026-11-20 → 2026-11-27 (+7d) |  | 0d → -3d |
| 20 | Practical completion | 2026-11-27 → 2026-12-02 (+5d) | 2026-11-27 → 2026-12-02 (+5d) |  | 0d → -3d |
